Schedule from MS Project XML, 2009-10-12 to 2010-07-02.
Microsoft

## Calendars

- Standard: Mon-Fri 08:00-12:00, 13:00-17:00; Sat-Sun off.

## Schedule

| ID | WBS | Task | Duration | Start | Finish | Predecessors | Total slack | Free slack | Text1 |
| --- | --- | --- | --- | --- | --- | --- | --- | --- | --- |
| 1 | 1 | **RST Adv. Sample Project** | 190d | 2009-10-12 | 2010-07-02 |  | 0d |  | Construct |
| 2 | 1.1 | **Division 1** | 150d | 2009-10-12 | 2010-05-07 |  | 0d |  | Construct |
| 3 | 1.1.1 | **Substructure** | 30d | 2009-10-12 | 2009-11-20 |  | 0d |  | Construct |
| 4 | 1.1.1.1 | Piles and Caps | 20d | 2009-10-12 | 2009-11-06 |  | 0d |  | Construct |
| 5 | 1.1.1.2 | Floor Slab (Floor 0) | 10d | 2009-11-09 | 2009-11-20 | 4 | 0d |  | Construct |
| 6 | 1.1.2 | **Floor 1** | 40d | 2009-11-23 | 2010-01-15 |  | 0d |  | Construct |
| 7 | 1.1.2.1 | Emergency staircase shaft | 7d | 2009-11-23 | 2009-12-01 | 5 | 139d | 11d | Construct |
| 8 | 1.1.2.2 | Concrete Rd Columns | 20d | 2009-11-23 | 2009-12-18 | 5 | 0d |  | Construct |
| 9 | 1.1.2.3 | Beams and Floor Slab (Floor 1) | 20d | 2009-12-21 | 2010-01-15 | 8 | 40d | 0d | Construct |
| 10 | 1.1.3 | **Floor 2** | 40d | 2010-01-18 | 2010-03-12 |  | 40d |  | Construct |
| 11 | 1.1.3.1 | Emergency staircase shaft | 7d | 2010-01-18 | 2010-01-26 | 9 | 113d |  | Construct |
| 12 | 1.1.3.2 | Concrete Rd Columns | 20d | 2010-01-18 | 2010-02-12 | 9 | 40d | 0d | Construct |
| 13 | 1.1.3.3 | Beams and Floor Slab (Floor 2) | 20d | 2010-02-15 | 2010-03-12 | 12 | 40d | 0d | Construct |
| 14 | 1.1.4 | **Floor 3** | 40d | 2010-03-15 | 2010-05-07 |  | 40d |  | Construct |
| 15 | 1.1.4.1 | Emergency staircase shaft | 7d | 2010-03-15 | 2010-03-23 | 13 | 73d |  | Construct |
| 16 | 1.1.4.2 | Concrete Rd Columns | 20d | 2010-03-15 | 2010-04-09 | 13 | 40d | 0d | Construct |
| 17 | 1.1.4.3 | Beams and Roof Slab | 20d | 2010-04-12 | 2010-05-07 | 16 | 40d |  | Construct |
| 18 | 1.2 | **Division 2** | 150d | 2009-11-09 | 2010-06-04 |  | 9d |  | Construct |
| 19 | 1.2.1 | **Substructure** | 18d | 2009-11-09 | 2009-12-02 |  | 12d |  | Construct |
| 20 | 1.2.1.1 | Piles and Caps | 10d | 2009-11-09 | 2009-11-20 | 4 | 12d | 0d | Construct |
| 21 | 1.2.1.2 | Floor Slab (Floor 0) | 8d | 2009-11-23 | 2009-12-02 | 20 | 12d |  | Construct |
| 22 | 1.2.2 | **Floor 1** | 40d | 2009-12-21 | 2010-02-12 |  | 0d |  | Construct |
| 23 | 1.2.2.1 | Concrete Rd Columns | 20d | 2009-12-21 | 2010-01-15 | 21, 8 | 0d |  | Construct |
| 24 | 1.2.2.2 | Beams and Floor Slab (Floor 1) | 20d | 2010-01-18 | 2010-02-12 | 23 | 9d | 0d | Construct |

| ID | WBS | Task | Duration | Start | Finish | Predecessors | Total slack | Free slack | Text1 |
| --- | --- | --- | --- | --- | --- | --- | --- | --- | --- |
| 25 | 1.2.3 | **Floor 2** | 40d | 2010-02-15 | 2010-04-09 |  | 9d |  | Construct |
| 26 | 1.2.3.1 | Concrete Rd Columns | 20d | 2010-02-15 | 2010-03-12 | 24 | 9d | 0d | Construct |
| 27 | 1.2.3.2 | Beams and Floor Slab (Floor 2) | 20d | 2010-03-15 | 2010-04-09 | 26 | 9d | 0d | Construct |
| 28 | 1.2.4 | **Floor 3** | 40d | 2010-04-12 | 2010-06-04 |  | 9d |  | Construct |
| 29 | 1.2.4.1 | Concrete Rd Columns | 20d | 2010-04-12 | 2010-05-07 | 27 | 9d | 0d | Construct |
| 30 | 1.2.4.2 | Beams and Roof Slab | 20d | 2010-05-10 | 2010-06-04 | 29 | 9d | 0d | Construct |
| 31 | 1.3 | **Division 3** | 160d | 2009-11-23 | 2010-07-02 |  | 0d |  | Construct |
| 32 | 1.3.1 | **Substructure** | 18d | 2009-11-23 | 2009-12-16 |  | 22d |  | Construct |
| 33 | 1.3.1.1 | Piles and Caps | 10d | 2009-11-23 | 2009-12-04 | 20 | 22d | 0d | Construct |
| 34 | 1.3.1.2 | Floor Slab (Floor 0) | 8d | 2009-12-07 | 2009-12-16 | 33 | 22d | 0d | Construct |
| 35 | 1.3.2 | **Floor 1** | 62d | 2009-12-17 | 2010-03-12 |  | 22d |  | Construct |
| 36 | 1.3.2.1 | Emergency staircase shaft | 7d | 2009-12-17 | 2009-12-25 | 34, 7 | 128d | 55d | Construct |
| 37 | 1.3.2.2 | Concrete Rd Columns | 20d | 2010-01-18 | 2010-02-12 | 34, 23 | 0d |  | Construct |
| 38 | 1.3.2.3 | Beams and Floor Slab (Floor 1) | 20d | 2010-02-15 | 2010-03-12 | 37 | 0d |  | Construct |
| 39 | 1.3.3 | **Floor 2** | 40d | 2010-03-15 | 2010-05-07 |  | 0d |  | Construct |
| 40 | 1.3.3.1 | Emergency staircase shaft | 7d | 2010-03-15 | 2010-03-23 | 36, 38 | 73d |  | Construct |
| 41 | 1.3.3.2 | Concrete Rd Columns | 20d | 2010-03-15 | 2010-04-09 | 38 | 0d |  | Construct |
| 42 | 1.3.3.3 | Beams and Floor Slab (Floor 2) | 20d | 2010-04-12 | 2010-05-07 | 41 | 0d |  | Construct |
| 43 | 1.3.4 | **Floor 3** | 40d | 2010-05-10 | 2010-07-02 |  | 0d |  | Construct |
| 44 | 1.3.4.1 | Emergency staircase shaft | 7d | 2010-05-10 | 2010-05-18 | 42 | 33d |  | Construct |
| 45 | 1.3.4.2 | Concrete Rd Columns | 20d | 2010-05-10 | 2010-06-04 | 42 | 0d |  | Construct |
| 46 | 1.3.4.3 | Beams and Roof Slab | 20d | 2010-06-07 | 2010-07-02 | 45 | 0d |  | Construct |
| 47 | 1.4 | **Entrance canopy** | 11d | 2010-06-07 | 2010-06-21 |  | 9d |  | Construct |
| 48 | 1.4.1 | Round foundations | 5d | 2010-06-07 | 2010-06-11 | 30 | 9d | 0d | Construct |
| 49 | 1.4.2 | Steel | 1d | 2010-06-14 | 2010-06-14 | 48 | 9d | 0d | Construct |
| 50 | 1.4.3 | Concrete Roof | 5d | 2010-06-15 | 2010-06-21 | 49 | 9d |  | Construct |
